Schedule from GanttProject, 2012-01-11 to 2012-01-11.

## Calendars

- Project calendar: Mon-Fri working; Sat-Sun off.

## Resources

| Resource |
| --- |
| Max |

## Schedule

| ID | WBS | Task | Duration | Start | Finish |
| --- | --- | --- | --- | --- | --- |
| 1 | 1 | **Analysis** | 1d | 2012-01-11 | 2012-01-11 |
| 2 | 1.1 | Incidents analysis | 1d | 2012-01-11 | 2012-01-11 |
